Schedule from ProjectLibre, 2000-01-06 to 2001-05-02.

## Calendars

- Standard[Imported]: Mon-Fri 17:00-21:00, 22:00-02:00; Sat-Sun off.

## Resources

| Resource |
| --- |
| 未割り当て |
| G.C. General Management |
| G.C. Project Management |
| G.C. Procurement |
| G.C. Scheduler |
| G.C. Accounting |
| G.C. Superintendent |
| G.C. Survey Crew |
| G.C. Rough Carpenter Crew |
| G.C. Labor Crew |
| G.C. Concrete Crew |
| G.C. Finish Carpenter Crew |
| Site Grading Contractor |
| Plumbing Contractor |
| Plumbing Contractor Management |
| Electric Contractor |
| Electric Contractor Management |
| HVAC Contractor |
| HVAC Contractor Management |
| Elevator Contractor |
| Elevator Contractor Management |
| Steel Erection Contractor |
| Steel Erection Contractor Management |
| Drywall Contractor |
| Masonry Contractor |
| Tile Contractor |
| Roofing Contractor |
| Roofing Contractor Management |
| Window Contractor |
| Carpet Contractor |
| Landscape Contractor |
| Paving Contractor |
| Painting Contractor |

## Schedule

| ID | WBS | Task | Duration | Start | Finish | Predecessors | Complete | Total slack | Constraint | Resources |
| --- | --- | --- | --- | --- | --- | --- | --- | --- | --- | --- |
| 1 | 1 | **Three-story Office Building (76,000 square feet)** | 344d | 2000-01-06 | 2001-05-02 |  | 1% | 236d |  | 未割り当て |
| 2 | 1.1 | **General Conditions** | 17d | 2000-01-06 | 2000-01-29 |  | 8% | 563d |  | 未割り当て |
| 3 | 1.1.1 | Receive notice to proceed and sign contract | 3d | 2000-01-06 | 2000-01-11 |  | 100% | 236d |  | G.C. General Management |
| 4 | 1.1.2 | Submit bond and insurance documents | 2d | 2000-01-06 | 2000-01-08 |  |  | 574d |  | G.C. Project Management; G.C. General Management [25%] |
| 5 | 1.1.3 | Prepare and submit project schedule | 2d | 2000-01-10 | 2000-01-12 | 4 |  | 574d |  | G.C. Project Management [25%]; G.C. Scheduler |
| 6 | 1.1.4 | Prepare and submit schedule of values | 2d | 2000-01-12 | 2000-01-14 | 5 |  | 574d |  | G.C. General Management [10%]; G.C. Project Management |
| 7 | 1.1.5 | Obtain building permits | 4d | 2000-01-11 | 2000-01-15 | 3 |  | 335d |  | G.C. Project Management [50%]; G.C. Procurement [50%] |
| 8 | 1.1.6 | Submit preliminary shop drawings | 10d | 2000-01-17 | 2000-01-29 | 7 |  | 335d |  | G.C. Project Management [50%]; G.C. Procurement [50%] |
| 9 | 1.1.7 | Submit monthly requests for payment | 1d | 2000-01-06 | 2000-01-07 | 3 | 30% | 246d |  | 未割り当て |
| 10 | 1.2 | **Long Lead Procurement** | 70d | 2000-01-07 | 2000-04-14 |  | 6% | 460d | start no earlier than 1970-01-01 | 未割り当て |
| 11 | 1.2.1 | Submit shop drawings and order long lead items - steel | 10d | 2000-01-07 | 2000-01-21 | 9 |  | 246d |  | Steel Erection Contractor Management |
| 12 | 1.2.2 | Submit shop drawings and order long lead items - roofing | 10d | 2000-01-31 | 2000-02-12 | 8 |  | 504d |  | Roofing Contractor Management |
| 13 | 1.2.3 | Submit shop drawings and order long lead items - elevator | 10d | 2000-01-26 | 2000-02-09 | 8 | 100% | 497d |  | Elevator Contractor Management |
| 14 | 1.2.4 | Submit shop drawings and order long lead items - plumbing | 10d | 2000-01-31 | 2000-02-12 | 8 |  | 335d |  | Plumbing Contractor Management |
| 15 | 1.2.5 | Submit shop drawings and order long lead items - electric | 10d | 2000-01-31 | 2000-02-12 | 8 |  | 335d |  | Electric Contractor Management |
| 16 | 1.2.6 | Submit shop drawings and order long lead items - HVAC | 10d | 2000-01-31 | 2000-02-12 | 8 |  | 335d |  | HVAC Contractor Management |
| 17 | 1.2.7 | Detail, fabricate and deliver steel | 60d | 2000-01-21 | 2000-04-14 | 11 |  | 246d |  | Steel Erection Contractor Management [50%]; Steel Erection Contractor [50%] |
| 18 | 1.3 | **Mobilize on Site** | 10d | 2000-01-11 | 2000-01-25 |  |  | 236d |  | 未割り当て |
| 19 | 1.3.1 | Install temporary power | 2d | 2000-01-11 | 2000-01-13 | 3 |  | 236d |  | Electric Contractor |
| 20 | 1.3.2 | Install temporary water service | 2d | 2000-01-11 | 2000-01-13 | 3 |  | 236d |  | Plumbing Contractor |
| 21 | 1.3.3 | Set up site office | 3d | 2000-01-13 | 2000-01-18 | 19, 20 |  | 236d |  | G.C. Superintendent; G.C. Labor Crew [10%] |
| 22 | 1.3.4 | Set line and grade benchmarks | 3d | 2000-01-18 | 2000-01-21 | 21 |  | 236d |  | G.C. Survey Crew |
| 23 | 1.3.5 | Prepare site - lay down yard and temporary fencing | 2d | 2000-01-21 | 2000-01-25 | 22 |  | 236d |  | Site Grading Contractor; G.C. Labor Crew [10%] |
| 24 | 1.4 | **Site Grading and Utilities** | 35d | 2000-01-25 | 2000-03-14 |  |  | 236d |  | 未割り当て |
| 25 | 1.4.1 | Clear and grub site | 3d | 2000-01-25 | 2000-01-28 | 21, 23 |  | 236d |  | Site Grading Contractor |
| 26 | 1.4.2 | Stone site access and temporary parking area | 2d | 2000-01-28 | 2000-02-01 | 25, 23 |  | 236d |  | Site Grading Contractor |
| 27 | 1.4.3 | Rough grade site (cut and fill) | 5d | 2000-02-01 | 2000-02-08 | 26 |  | 236d |  | Site Grading Contractor |
| 28 | 1.4.4 | Install storm drainage | 10d | 2000-02-08 | 2000-02-22 | 27 |  | 245d |  | Site Grading Contractor |
| 29 | 1.4.5 | Install exterior fire line and building fire riser | 10d | 2000-02-08 | 2000-02-22 | 27 |  | 236d |  | Plumbing Contractor |
| 30 | 1.4.6 | Perform final site grading | 10d | 2000-02-22 | 2000-03-07 | 28FF+1d, 29 |  | 236d |  | Site Grading Contractor |
| 31 | 1.4.7 | Erect building batter boards and layout building | 5d | 2000-03-07 | 2000-03-14 | 30 |  | 236d |  | G.C. Survey Crew |

Notes:
- 9: Monthly requests for payment can be entered as a recurring task. See the Help topic "Enter a recurring task."

| ID | WBS | Task | Duration | Start | Finish | Predecessors | Total slack | Resources |
| --- | --- | --- | --- | --- | --- | --- | --- | --- |
| 32 | 1.5 | **Foundations** | 33d | 2000-03-14 | 2000-04-28 |  | 440d | 未割り当て |
| 33 | 1.5.1 | Excavate foundations | 10d | 2000-03-14 | 2000-03-28 | 31 | 236d | Site Grading Contractor [50%] |
| 34 | 1.5.2 | Excavate elevator pit | 2d | 2000-03-14 | 2000-03-16 | 31 | 450d | Site Grading Contractor |
| 35 | 1.5.3 | Form column piers and spread foundations | 4d | 2000-03-28 | 2000-04-01 | 33 | 236d | G.C. Rough Carpenter Crew |
| 36 | 1.5.4 | Rough-in electric and plumbing in elevator | 4d | 2000-03-16 | 2000-03-22 | 34 | 450d | Plumbing Contractor; Electric Contractor |
| 37 | 1.5.5 | テスト | 4d | 2000-03-22 | 2000-03-28 | 36 | 450d | G.C. Rough Carpenter Crew |
| 38 | 1.5.6 | 猫 | 4d | 2000-04-03 | 2000-04-07 | 35 | 236d | G.C. Rough Carpenter Crew |
| 39 | 1.5.7 | 狐と牛 | 5d | 2000-04-07 | 2000-04-14 | 38 | 236d | G.C. Concrete Crew |
| 40 | 1.5.8 | Pour concrete elevator walls | 1d | 2000-03-28 | 2000-03-29 | 37 | 450d | G.C. Concrete Crew |
| 41 | 1.5.9 | Cure elevator wall concrete | 7d | 2000-03-29 | 2000-04-07 | 40 | 450d | G.C. Labor Crew [10%] |
| 42 | 1.5.10 | Cure piers and foundations | 7d | 2000-04-14 | 2000-04-25 | 39 | 236d | G.C. Labor Crew [10%] |
| 43 | 1.5.11 | Strip wall forms | 1d | 2000-04-07 | 2000-04-08 | 41 | 450d | G.C. Labor Crew [10%] |
| 44 | 1.5.12 | Strip column piers and foundation forms | 3d | 2000-04-25 | 2000-04-28 | 42 | 236d | G.C. Labor Crew |
| 45 | 1.5.13 | Install pneumatic tube in elevator pit | 3d | 2000-04-10 | 2000-04-13 | 43 | 450d | Elevator Contractor |
| 46 | 1.5.14 | Prepare and pour concrete floor in elevator pit | 1d | 2000-04-13 | 2000-04-14 | 45 | 450d | G.C. Concrete Crew |
| 47 | 1.6 | **Steel Erection** | 45d | 2000-04-28 | 2000-06-30 |  | 375d | 未割り当て |
| 48 | 1.6.1 | Erect steel columns, beams and joist - 1st and 2nd floors | 10d | 2000-04-28 | 2000-05-12 | 44, 17 | 236d | Steel Erection Contractor |
| 49 | 1.6.2 | Erect steel columns, beams and joist - 3rd floor and roof | 10d | 2000-05-12 | 2000-05-26 | 48 | 236d | Steel Erection Contractor |
| 50 | 1.6.3 | Install miscellaneous iron and bracing - 1st and 2nd floors | 10d | 2000-05-12 | 2000-05-26 | 48 | 400d | Steel Erection Contractor [75%] |
| 51 | 1.6.4 | Install miscellaneous iron and bracing - 3rd floor and roof | 10d | 2000-05-26 | 2000-06-09 | 49 | 236d | Steel Erection Contractor [75%] |
| 52 | 1.6.5 | Install stairs and miscellaneous iron railing | 10d | 2000-06-09 | 2000-06-23 | 51 | 236d | Steel Erection Contractor [50%] |
| 53 | 1.6.6 | Touch-up paint on steel | 5d | 2000-06-23 | 2000-06-30 | 52 | 236d | Steel Erection Contractor [20%] |
| 54 | 1.7 | **Form and Pour Concrete - Floors and Roof** | 85d | 2000-05-12 | 2000-09-08 |  | 321d | 未割り当て |
| 55 | 1.7.1 | Form 2nd floor including all floor openings | 5d | 2000-06-30 | 2000-07-07 | 53, 14, 15, 16, 48 | 236d | G.C. Rough Carpenter Crew; G.C. Labor Crew [20%] |
| 56 | 1.7.2 | Install rebar and in-floor utilities (including mechanical, electrical, plumbing) | 5d | 2000-05-12 | 2000-05-19 | 48 | 271d | G.C. Labor Crew [33%]; Plumbing Contractor [33%]; Electric Contractor [33%] |
| 57 | 1.7.3 | Pour 2nd floor slab | 4d | 2000-07-07 | 2000-07-13 | 56, 55 | 236d | G.C. Concrete Crew |
| 58 | 1.7.4 | Cure 2nd floor slab | 7d | 2000-07-13 | 2000-07-22 | 57 | 236d | G.C. Labor Crew [10%] |
| 59 | 1.7.5 | Strip forms from 2nd floor slab | 2d | 2000-07-24 | 2000-07-26 | 58 | 335d | G.C. Labor Crew |
| 60 | 1.7.6 | Form 3rd floor including all floor openings | 5d | 2000-07-24 | 2000-07-29 | 58 | 236d | G.C. Rough Carpenter Crew [50%]; G.C. Labor Crew [20%] |
| 61 | 1.7.7 | Install rebar and in-floor utilities (including mechanical, electrical, plumbing) | 5d | 2000-07-24 | 2000-07-29 | 58 | 236d | G.C. Labor Crew [33%]; Plumbing Contractor [33%]; Electric Contractor [33%] |
| 62 | 1.7.8 | Pour 3rd floor slab | 4d | 2000-07-31 | 2000-08-04 | 61, 60 | 236d | G.C. Concrete Crew |
| 63 | 1.7.9 | Cure 3rd floor slab | 7d | 2000-08-04 | 2000-08-15 | 62 | 236d | G.C. Labor Crew [10%] |
| 64 | 1.7.10 | Strip forms from 3rd floor slab | 2d | 2000-08-15 | 2000-08-17 | 63 | 252d | G.C. Labor Crew |
| 65 | 1.7.11 | Form roof slab including all floor openings | 5d | 2000-08-15 | 2000-08-22 | 63 | 236d | G.C. Rough Carpenter Crew; G.C. Labor Crew [20%] |
| 66 | 1.7.12 | Install rebar and in-floor utilities (including mechanical, electrical, plumbing) | 5d | 2000-08-15 | 2000-08-22 | 63 | 236d | G.C. Labor Crew [33%]; Plumbing Contractor [33%]; Electric Contractor [33%] |
| 67 | 1.7.13 | Pour roof slab | 4d | 2000-08-22 | 2000-08-26 | 66, 65 | 236d | G.C. Concrete Crew |
| 68 | 1.7.14 | Cure roof slab | 7d | 2000-08-28 | 2000-09-06 | 67 | 236d | G.C. Labor Crew [10%] |
| 69 | 1.7.15 | Strip forms from roof slab | 2d | 2000-09-06 | 2000-09-08 | 68 | 236d | G.C. Labor Crew |
| 70 | 1.7.16 | Form 1st floor | 4d | 2000-07-26 | 2000-08-01 | 59 | 336d | G.C. Rough Carpenter Crew |
| 71 | 1.7.17 | Install electrical underground | 5d | 2000-07-26 | 2000-08-02 | 59 | 335d | Electric Contractor |
| 72 | 1.7.18 | Install plumbing underground | 5d | 2000-07-26 | 2000-08-02 | 59 | 335d | Plumbing Contractor |
| 73 | 1.7.19 | Install rebar and in-floor utilities | 4d | 2000-07-26 | 2000-08-01 | 59 | 336d | G.C. Labor Crew [33%]; Plumbing Contractor [33%]; Electric Contractor [33%] |
| 74 | 1.7.20 | Pour 1st floor slab | 4d | 2000-08-02 | 2000-08-08 | 70, 73, 71, 72 | 335d | G.C. Concrete Crew |
| 75 | 1.7.21 | Cure 1st floor slab | 7d | 2000-08-08 | 2000-08-17 | 74 | 335d | G.C. Labor Crew [10%] |
| 76 | 1.7.22 | Strip forms from 1st floor slab | 2d | 2000-08-17 | 2000-08-19 | 75 | 335d | G.C. Labor Crew |

| ID | WBS | Task | Duration | Start | Finish | Predecessors | Total slack | Resources |
| --- | --- | --- | --- | --- | --- | --- | --- | --- |
| 77 | 1.8 | **Carpentry Work** | 15d | 2000-09-08 | 2000-09-29 |  | 236d | 未割り当て |
| 78 | 1.8.1 | Install exterior sheathing and metal studs | 15d | 2000-09-08 | 2000-09-29 | 64, 69 | 236d | Drywall Contractor |
| 79 | 1.9 | **Masonry Work** | 110d | 2000-06-09 | 2000-11-10 |  | 316d | 未割り当て |
| 80 | 1.9.1 | Rough-in plumbing at toilets and masonry walls | 20d | 2000-08-21 | 2000-09-16 | 76, 14 | 335d | Plumbing Contractor |
| 81 | 1.9.2 | Lay masonry at core, mechanical, and toilets | 20d | 2000-06-09 | 2000-07-07 | 50, 51 | 390d | Masonry Contractor |
| 82 | 1.9.3 | Install exterior masonry work | 25d | 2000-09-29 | 2000-11-03 | 78 | 236d | Masonry Contractor |
| 83 | 1.9.4 | Install roof drains | 2d | 2000-11-03 | 2000-11-07 | 82 | 313d | Roofing Contractor |
| 84 | 1.9.5 | Install tile in toilet rooms | 10d | 2000-09-18 | 2000-09-30 | 80 | 335d | Tile Contractor |
| 85 | 1.9.6 | Clean masonry | 5d | 2000-11-03 | 2000-11-10 | 82 | 316d | Masonry Contractor [50%] |
| 86 | 1.9.7 | Clean toilet room tile | 5d | 2000-10-02 | 2000-10-07 | 84 | 335d | Tile Contractor [50%] |
| 87 | 1.10 | **Roofing** | 31d | 2000-11-03 | 2000-12-16 |  | 311d | 未割り当て |
| 88 | 1.10.1 | Install flashing at parapet walls | 4d | 2000-11-03 | 2000-11-09 | 82 | 311d | Roofing Contractor |
| 89 | 1.10.2 | Pour lightweight concrete roof fill | 2d | 2000-11-09 | 2000-11-11 | 12, 83, 88 | 311d | Roofing Contractor |
| 90 | 1.10.3 | Install seamless roofing material | 5d | 2000-11-18 | 2000-11-25 | 89FS+5d | 311d | Roofing Contractor |
| 91 | 1.10.4 | Spread stone ballast on seamless roof | 5d | 2000-11-27 | 2000-12-02 | 90 | 311d | Roofing Contractor |
| 92 | 1.10.5 | Set rooftop equipment | 10d | 2000-12-04 | 2000-12-16 | 91 | 311d | HVAC Contractor |
| 93 | 1.11 | **Window wall and store front closures** | 60d | 2000-11-03 | 2001-01-26 |  | 241d | 未割り当て |
| 94 | 1.11.1 | Install window wall aluminum and glass | 25d | 2000-11-03 | 2000-12-08 | 82 | 236d | Window Contractor |
| 95 | 1.11.2 | Install interior stud walls and drywall | 25d | 2000-12-08 | 2001-01-12 | 94 | 236d | Drywall Contractor |
| 96 | 1.11.3 | Install interior doors and hardware | 10d | 2001-01-12 | 2001-01-26 | 95 | 241d | G.C. Finish Carpenter Crew |
| 97 | 1.11.4 | Install store front doors and hardware | 15d | 2000-11-03 | 2000-11-24 | 82 | 271d | Window Contractor |
| 98 | 1.12 | **Building Finishes** | 80d | 2000-12-08 | 2001-03-30 |  | 243d | 未割り当て |
| 99 | 1.12.1 | Install millwork and wood trim | 15d | 2001-01-12 | 2001-02-02 | 97, 95 | 236d | G.C. Finish Carpenter Crew |
| 100 | 1.12.2 | Paint walls and woodwork | 20d | 2001-02-02 | 2001-03-02 | 99, 96 | 236d | Painting Contractor |
| 101 | 1.12.3 | Install conduit at ceiling plenum space | 15d | 2000-12-08 | 2000-12-29 | 94 | 261d | Electric Contractor |
| 102 | 1.12.4 | Install duct in ceiling plenum space | 15d | 2001-01-12 | 2001-02-02 | 95, 101 | 256d | HVAC Contractor |
| 103 | 1.12.5 | Install ceiling grid | 10d | 2001-02-02 | 2001-02-16 | 95, 102 | 256d | Drywall Contractor |
| 104 | 1.12.6 | Install ceiling tile | 10d | 2001-02-16 | 2001-03-02 | 103 | 256d | Drywall Contractor |
| 105 | 1.12.7 | Hang wallpaper | 10d | 2001-02-16 | 2001-03-02 | 103 | 256d | Painting Contractor |
| 106 | 1.12.8 | Install building carpet | 20d | 2001-03-02 | 2001-03-30 | 100 | 236d | Carpet Contractor |
| 107 | 1.12.9 | Install hardware and accessories | 15d | 2001-03-02 | 2001-03-23 | 100 | 241d | G.C. Finish Carpenter Crew |
| 108 | 1.12.10 | Complete interior and exterior sod and plantings | 10d | 2001-03-02 | 2001-03-16 | 100 | 243d | Landscape Contractor |
| 109 | 1.12.11 | Pave, curb, and stripe parking lot | 10d | 2001-03-16 | 2001-03-30 | 108 | 243d | Paving Contractor |

| ID | WBS | Task | Duration | Start | Finish | Predecessors | Total slack | Resources |
| --- | --- | --- | --- | --- | --- | --- | --- | --- |
| 110 | 1.13 | **Elevators** | 40d | 2000-07-07 | 2000-09-01 |  | 390d | 未割り当て |
| 111 | 1.13.1 | Set elevator equipment in shafts | 20d | 2000-07-07 | 2000-08-04 | 81, 46, 13 | 390d | Elevator Contractor |
| 112 | 1.13.2 | Set equipment in mechanical room | 10d | 2000-08-04 | 2000-08-18 | 111 | 390d | Elevator Contractor |
| 113 | 1.13.3 | Test and align doors and equipment | 10d | 2000-08-18 | 2000-09-01 | 112 | 390d | Elevator Contractor |
| 114 | 1.14 | **Plumbing** | 90d | 2000-11-10 | 2001-03-16 |  | 246d | 未割り当て |
| 115 | 1.14.1 | Rough-in plumbing in drywall walls | 20d | 2000-12-08 | 2001-01-05 | 94 | 271d | Plumbing Contractor |
| 116 | 1.14.2 | Tie-in fire line riser and set valves | 10d | 2000-11-10 | 2000-11-24 | 85 | 316d | Plumbing Contractor |
| 117 | 1.14.3 | Set plumbing fixtures and trim | 15d | 2001-01-05 | 2001-01-26 | 86, 115, 80 | 271d | Plumbing Contractor |
| 118 | 1.14.4 | Flush, test, and clean piping and fixtures | 10d | 2001-03-02 | 2001-03-16 | 100, 116, 117 | 246d | Plumbing Contractor |
| 119 | 1.15 | **Electrical** | 139d | 2000-08-21 | 2001-03-02 |  | 259d | 未割り当て |
| 120 | 1.15.1 | Rough-in electrical in masonry walls | 20d | 2000-08-21 | 2000-09-16 | 76, 15 | 335d | Electric Contractor |
| 121 | 1.15.2 | Rough-in electrical in drywall walls | 20d | 2000-12-08 | 2001-01-05 | 94 | 271d | Electric Contractor |
| 122 | 1.15.3 | Pull wire in conduit and set area transformers | 15d | 2000-12-29 | 2001-01-19 | 120, 101 | 261d | Electric Contractor |
| 123 | 1.15.4 | Install and terminate electrical devices | 15d | 2001-01-19 | 2001-02-09 | 122, 121 | 261d | Electric Contractor |
| 124 | 1.15.5 | Make electrical terminations for HVAC equipment | 2d | 2001-01-19 | 2001-01-23 | 122, 92 | 287d | Electric Contractor |
| 125 | 1.15.6 | Install light fixtures - test and clean | 10d | 2001-02-16 | 2001-03-02 | 103, 123 | 256d | Electric Contractor |
| 126 | 1.16 | **Heating and Ventilating - AC** | 180d | 2000-07-07 | 2001-03-16 |  | 269d | 未割り当て |
| 127 | 1.16.1 | Set equipment in mechanical room | 10d | 2000-07-07 | 2000-07-21 | 81, 16 | 404d | HVAC Contractor |
| 128 | 1.16.2 | Rough-in mechanical in masonry walls | 20d | 2000-08-21 | 2000-09-16 | 76 | 363d | HVAC Contractor |
| 129 | 1.16.3 | Rough-in mechanical in drywall walls | 10d | 2000-12-08 | 2000-12-22 | 94 | 329d | HVAC Contractor |
| 130 | 1.16.4 | Install duct in building chase | 15d | 2000-12-08 | 2000-12-29 | 127, 128, 94 | 304d | HVAC Contractor |
| 131 | 1.16.5 | Set HVAC trim and test and balance system | 20d | 2001-02-16 | 2001-03-16 | 103, 130, 124 | 269d | HVAC Contractor |
| 132 | 1.17 | **Final Clean-up and Occupancy** | 60d | 2001-01-12 | 2001-04-06 |  | 254d | 未割り当て |
| 133 | 1.17.1 | Install hard tile flooring in common areas | 5d | 2001-01-12 | 2001-01-19 | 95 | 282d | Tile Contractor |
| 134 | 1.17.2 | Clean hard tile floors | 4d | 2001-01-19 | 2001-01-25 | 133 | 282d | Tile Contractor [50%] |
| 135 | 1.17.3 | Remove debris from building and do final clean-up | 4d | 2001-03-30 | 2001-04-05 | 106, 105, 107, 108, 118, 125, 104, 134 | 236d | G.C. Labor Crew |
| 136 | 1.17.4 | Substantial completion date | 1d | 2001-04-05 | 2001-04-06 | 135 | 254d | G.C. Superintendent |

| ID | WBS | Task | Duration | Start | Finish | Predecessors | Total slack | Resources |
| --- | --- | --- | --- | --- | --- | --- | --- | --- |
| 137 | 1.18 | **Complete Final Inspections** | 6d | 2001-04-05 | 2001-04-13 |  | 236d | 未割り当て |
| 138 | 1.18.1 | Complete elevator inspection and certification | 3d | 2001-04-05 | 2001-04-10 | 135, 113 | 236d | Elevator Contractor |
| 139 | 1.18.2 | Perform architect's inspection | 1d | 2001-04-10 | 2001-04-11 | 135, 109, 138 | 236d | G.C. Superintendent [50%]; G.C. Project Management [50%] |
| 140 | 1.18.3 | Perform local building agency inspection | 1d | 2001-04-11 | 2001-04-12 | 139 | 236d | G.C. Project Management [50%]; G.C. Superintendent [50%] |
| 141 | 1.18.4 | Perform Fire Marshal's inspection | 1d | 2001-04-12 | 2001-04-13 | 140 | 236d | G.C. Superintendent [50%]; G.C. Project Management [50%] |
| 142 | 1.19 | Complete punch list items from all inspections | 10d | 2001-04-13 | 2001-04-27 | 141 | 236d | G.C. Superintendent [11%]; G.C. Labor Crew [11%]; Plumbing Contractor [11%]; Electric Contractor [11%]; HVAC Contractor [11%]; Drywall Contractor [11%]; Carpet Contractor [11%]; Paving Contractor [11%]; Painting Contractor [11%] |
| 143 | 1.20 | Obtain certificate of occupancy | 2d | 2001-04-27 | 2001-05-01 | 142 | 236d | G.C. Project Management |
| 144 | 1.21 | Issue final completion documents including warranties | 1d | 2001-04-27 | 2001-04-28 | 142 | 237d | G.C. Project Management |
| 145 | 1.22 | Issue final request for payment | 1d | 2001-05-01 | 2001-05-02 | 143, 144 | 236d | G.C. Project Management [33%]; G.C. Accounting [33%]; G.C. General Management [33%] |
